# Práctica GPT

Schedule from MS Project, 2012-01-09 to 2012-04-09, costs in €.
www.intercambiosvirtuales.org

## Calendars

- Calendario 2012 Madrid: Mon-Fri 09:00-13:00, 15:00-19:00; Sat-Sun off.

## Resources

| Resource | Rate |
| --- | --- |
| Consultor senior Ingeniero Informatico 1 | 41.38 |
| Consultor senior Ingeniero Informatico 2 | 41.38 |
| Consultor especializado en ITIL | 38.79 |
| Becario Junior 1 | 9.31 |
| Becario Junior 2 | 9.31 |
| Proveedor A |  |
| Consultor senior Ingeniero Informatico 3 (Externo) | 56.25 |

## Schedule

| ID | WBS | Task | Type | Duration | Start | Finish | Predecessors | Total slack | Free slack | Constraint | Resources | Work | Cost |
| --- | --- | --- | --- | --- | --- | --- | --- | --- | --- | --- | --- | --- | --- |
| 1 | 1 | **Proyecto Empresa Bancaria** |  | 65.33d | 2012-01-09 | 2012-04-09 |  | 0d |  |  |  | 983.95h | 29,536.4 |
| 2 | 1.1 | **Analizar las actividades actualmente realizadas sobre la gestión de la configuración** |  | 5.21d | 2012-01-09 | 2012-01-16 |  | 0.07d |  |  |  | 144h | 5,653.82 |
| 3 | 1.1.1 | HITO Inicio del Analisis | milestone | 0d | 2012-01-09 | 2012-01-09 |  | 93.28d |  |  |  |  |  |
| 4 | 1.1.2 | **Entrevistas** |  | 2.78d | 2012-01-09 | 2012-01-11 |  | 0.07d | 0d |  |  | 80h | 3,204.2 |
| 5 | 1.1.2.1 | Entrevistas con el cliente |  | 2.54d | 2012-01-09 | 2012-01-11 |  | 0.31d | 0.24d |  | Consultor especializado en ITIL [50%]; Consultor senior Ingeniero Informatico 1 [50%]; Consultor senior Ingeniero Informatico 2 [50%]; Becario Junior 2 [30%]; Consultor senior Ingeniero Informatico 3 (Externo) [50%] | 40h | 1,597.58 |
| 6 | 1.1.2.2 | Identificacion de los Stakeholders |  | 2.78d | 2012-01-09 | 2012-01-11 |  | 0.07d | 0d |  | Consultor especializado en ITIL [50%]; Consultor senior Ingeniero Informatico 2 [50%]; Consultor senior Ingeniero Informatico 1 [50%]; Becario Junior 1 [30%]; Consultor senior Ingeniero Informatico 3 (Externo) [50%] | 40h | 1,606.63 |
| 7 | 1.1.3 | **Recopilar documentacion** |  | 0.87d | 2012-01-11 | 2012-01-12 | 4 | 0.07d | 0d |  |  | 32h | 1,275.72 |
| 8 | 1.1.3.1 | Estudio preliminar de las actividades realizadas en la actualidad |  | 0.87d | 2012-01-11 | 2012-01-12 | 5, 6 | 0.07d | 0d |  | Consultor especializado en ITIL; Consultor senior Ingeniero Informatico 1; Consultor senior Ingeniero Informatico 2; Becario Junior 1 [30%]; Becario Junior 2 [30%]; Consultor senior Ingeniero Informatico 3 (Externo) | 32h | 1,275.72 |
| 9 | 1.1.4 | **Analizar documentacion** |  | 0.58d | 2012-01-12 | 2012-01-13 | 7 | 0.07d |  |  |  | 14h | 567.23 |
| 10 | 1.1.4.1 | Aceptacion de la documentacion recogida |  | 0.58d | 2012-01-12 | 2012-01-13 | 8 | 0.07d | 0d |  | Consultor especializado en ITIL; Consultor senior Ingeniero Informatico 1; Consultor senior Ingeniero Informatico 2 | 14h | 567.23 |
| 11 | 1.1.4.2 | HITO Aceptacion de la documentacion recogida | milestone | 0d | 2012-01-13 | 2012-01-13 | 10 | 0.07d | 0d |  |  |  |  |
| 12 | 1.1.5 | **Informe** |  | 0.98d | 2012-01-13 | 2012-01-16 | 11 | 0d |  |  |  | 18h | 606.66 |
| 13 | 1.1.5.1 | Preparar borrador informe |  | 0.28d | 2012-01-13 | 2012-01-13 | 10 | 0.07d | 0d |  | Becario Junior 1 [30%]; Becario Junior 2 [30%]; Consultor especializado en ITIL; Consultor senior Ingeniero Informatico 1; Consultor senior Ingeniero Informatico 2 | 8h | 282.52 |
| 14 | 1.1.5.2 | Aceptacion del borrador |  | 0.14d | 2012-01-13 | 2012-01-13 | 13 | 0.07d | 0d |  | Consultor especializado en ITIL; Consultor senior Ingeniero Informatico 1; Consultor senior Ingeniero Informatico 2; Becario Junior 1 [30%]; Becario Junior 2 [30%] | 4h | 141.26 |
| 15 | 1.1.5.3 | Preparar informe |  | 0.2d | 2012-01-13 | 2012-01-13 | 14 | 0.07d | 0d |  | Becario Junior 1 [30%]; Becario Junior 2 [30%]; Consultor especializado en ITIL; Consultor senior Ingeniero Informatico 1 | 3h | 92.53 |
| 16 | 1.1.5.4 | Aprobacion del informe |  | 0.08d | 2012-01-13 | 2012-01-13 | 15 | 0.07d |  |  | Consultor especializado en ITIL; Consultor senior Ingeniero Informatico 1; Consultor senior Ingeniero Informatico 2 | 2h | 81.03 |
| 17 | 1.1.5.5 | Entrega del documento del analisis de la situacion actual |  | 0.21d | 2012-01-16 | 2012-01-16 | 16 | 0d |  | must start on 2012-01-16 | Becario Junior 1 [30%]; Becario Junior 2 [30%] | 1h | 9.31 |
| 18 | 1.1.6 | Finalizacion del Analisis | milestone | 0d | 2012-01-16 | 2012-01-16 | 4, 7, 9, 12 | 1.27d | 0d |  |  |  |  |
| 19 | 1.2 | **Definir el modelo de datos y la especificación de requisitos de la CMDB** |  | 5.52d | 2012-01-16 | 2012-01-23 | 18 | 1.27d | 0d |  |  | 84.42h | 3,588.89 |
| 20 | 1.2.1 | Inicio de la definicion | milestone | 0d | 2012-01-16 | 2012-01-16 | 18 | 1.27d | 0d |  |  |  |  |
| 21 | 1.2.2 | **Obtencion informacion CI's** |  | 3.55d | 2012-01-16 | 2012-01-19 | 20 | 1.27d | 0d |  |  | 50h | 2,163.46 |
| 22 | 1.2.2.1 | Identificar familia de CI's |  | 3.55d | 2012-01-16 | 2012-01-19 | 18 | 1.27d |  |  | Becario Junior 1 [6%]; Becario Junior 2 [6%]; Consultor senior Ingeniero Informatico 1 [20%]; Consultor senior Ingeniero Informatico 2 [20%]; Consultor senior Ingeniero Informatico 3 (Externo) [20%] | 10h | 432.69 |
| 23 | 1.2.2.2 | Identificar atributos que vamos a recopilar de cada CI's |  | 3.55d | 2012-01-16 | 2012-01-19 | 18 | 1.27d |  |  | Becario Junior 1 [6%]; Becario Junior 2 [6%]; Consultor senior Ingeniero Informatico 1 [20%]; Consultor senior Ingeniero Informatico 2 [20%]; Consultor senior Ingeniero Informatico 3 (Externo) [20%] | 10h | 432.69 |
| 24 | 1.2.2.3 | Identificar la fuente de datos de cada CI's |  | 3.55d | 2012-01-16 | 2012-01-19 | 18 | 1.27d |  |  | Becario Junior 1 [6%]; Becario Junior 2 [6%]; Consultor senior Ingeniero Informatico 1 [20%]; Consultor senior Ingeniero Informatico 2 [20%]; Consultor senior Ingeniero Informatico 3 (Externo) [20%] | 10h | 432.69 |
| 25 | 1.2.2.4 | Identificar datos a integrar |  | 3.55d | 2012-01-16 | 2012-01-19 | 18 | 1.27d |  |  | Becario Junior 1 [6%]; Becario Junior 2 [6%]; Consultor senior Ingeniero Informatico 1 [20%]; Consultor senior Ingeniero Informatico 2 [20%]; Consultor senior Ingeniero Informatico 3 (Externo) [20%] | 10h | 432.69 |
| 26 | 1.2.2.5 | Identificar relaciones entre CI's |  | 3.55d | 2012-01-16 | 2012-01-19 | 18 | 1.27d |  |  | Becario Junior 1 [6%]; Becario Junior 2 [6%]; Consultor senior Ingeniero Informatico 1 [20%]; Consultor senior Ingeniero Informatico 2 [20%]; Consultor senior Ingeniero Informatico 3 (Externo) [20%] | 10h | 432.69 |

| ID | WBS | Task | Type | Duration | Start | Finish | Predecessors | Total slack | Free slack | Constraint | Resources | Work | Cost |
| --- | --- | --- | --- | --- | --- | --- | --- | --- | --- | --- | --- | --- | --- |
| 27 | 1.2.3 | **Informe de modelo de datos** |  | 1.76d | 2012-01-19 | 2012-01-23 | 21 | 1.28d | 0.21d |  |  | 17h | 701.02 |
| 28 | 1.2.3.1 | Preparar borrador informe |  | 0.56d | 2012-01-19 | 2012-01-20 | 21 | 1.28d | 0d |  | Consultor senior Ingeniero Informatico 1; Becario Junior 1 [30%]; Consultor senior Ingeniero Informatico 3 (Externo) [50%] | 8h | 321.32 |
| 29 | 1.2.3.2 | Aceptacion del borrador |  | 0.45d | 2012-01-20 | 2012-01-20 | 28 | 1.28d | 0d |  | Consultor senior Ingeniero Informatico 1; Becario Junior 1 [30%]; Consultor senior Ingeniero Informatico 3 (Externo) [50%] | 4h | 157.57 |
| 30 | 1.2.3.3 | Preparar informe |  | 0.47d | 2012-01-20 | 2012-01-23 | 29 | 1.28d | 0d |  | Consultor senior Ingeniero Informatico 1; Becario Junior 1 [30%]; Consultor senior Ingeniero Informatico 3 (Externo) [50%] | 3h | 133.98 |
| 31 | 1.2.3.4 | Aprobacion del informe |  | 0.28d | 2012-01-23 | 2012-01-23 | 30 | 1.28d | 0d |  | Consultor senior Ingeniero Informatico 1; Consultor senior Ingeniero Informatico 3 (Externo) [25%]; Consultor especializado en ITIL [50%] | 2h | 88.14 |
| 32 | 1.2.3.5 | HITO Aceptacion de la documentacion recogida | milestone | 0d | 2012-01-23 | 2012-01-23 | 31 | 1.28d | 0d |  |  |  |  |
| 33 | 1.2.4 | **Informe de especificacion de requisitos** |  | 1.76d | 2012-01-19 | 2012-01-23 | 21 | 1.27d | 0.21d |  |  | 17h | 700.98 |
| 34 | 1.2.4.1 | Preparar borrador informe |  | 0.56d | 2012-01-19 | 2012-01-20 | 21 | 1.27d | 0d |  | Consultor senior Ingeniero Informatico 2; Becario Junior 2 [30%]; Consultor senior Ingeniero Informatico 3 (Externo) [50%] | 8h | 321.28 |
| 35 | 1.2.4.2 | Aceptacion del borrador |  | 0.45d | 2012-01-20 | 2012-01-20 | 34 | 1.27d | 0d |  | Consultor senior Ingeniero Informatico 2; Becario Junior 2 [30%]; Consultor senior Ingeniero Informatico 3 (Externo) [50%] | 4h | 157.57 |
| 36 | 1.2.4.3 | Preparar informe |  | 0.47d | 2012-01-20 | 2012-01-23 | 35 | 1.27d | 0d |  | Consultor senior Ingeniero Informatico 2; Becario Junior 2 [30%]; Consultor senior Ingeniero Informatico 3 (Externo) [50%] | 3h | 133.98 |
| 37 | 1.2.4.4 | Aprobacion del informe |  | 0.28d | 2012-01-23 | 2012-01-23 | 36 | 1.27d | 0d |  | Consultor senior Ingeniero Informatico 2; Consultor senior Ingeniero Informatico 3 (Externo) [25%]; Consultor especializado en ITIL [50%] | 2h | 88.14 |
| 38 | 1.2.4.5 | HITO Aceptacion de la documentacion recogida | milestone | 0d | 2012-01-23 | 2012-01-23 | 37 | 1.27d | 0d |  |  |  |  |
| 39 | 1.2.5 | Entrega del documento de la especificacion de requisitos y modelo de datos |  | 0.21d | 2012-01-23 | 2012-01-23 | 32, 38 | 1.27d | 0d |  | Consultor senior Ingeniero Informatico 3 (Externo) [25%] | 0.42h | 23.44 |
| 40 | 1.2.6 | Finalizacion de la definicion | milestone | 0d | 2012-01-23 | 2012-01-23 | 21, 27, 33, 39 | 1.27d | 0d |  |  |  |  |
| 41 | 1.3 | **Definir las fuentes de datos y el mecanismo de obtención de los mismos** |  | 44.62d | 2012-01-23 | 2012-03-26 | 40 | 9.99d |  |  |  | 129.33h | 4,488.38 |
| 42 | 1.3.1 | Inicio de la definicion | milestone | 0d | 2012-01-23 | 2012-01-23 | 40 | 54.6d |  |  |  |  |  |
| 43 | 1.3.2 | **Diseño de arquitecturas** |  | 42.09d | 2012-01-25 | 2012-03-23 | 40 | 0d |  |  |  | 106h | 3,512.62 |
| 44 | 1.3.2.1 | Investigar la mejor solucion para obtener los datos |  | 5.41d | 2012-01-25 | 2012-02-01 | 40 | 28.73d | 0d | start no earlier than 2012-01-25 | Becario Junior 1 [15%]; Consultor senior Ingeniero Informatico 1 [50%]; Becario Junior 2 [15%]; Consultor senior Ingeniero Informatico 2 [50%] | 40h | 1,239.16 |
| 45 | 1.3.2.2 | Probar las distintas soluciones |  | 5.4d | 2012-02-01 | 2012-02-08 | 62, 39, 44 | 28.73d |  |  | Becario Junior 1 [15%]; Consultor senior Ingeniero Informatico 1 [50%]; Becario Junior 2 [15%]; Consultor senior Ingeniero Informatico 2 [50%] | 40h | 1,239.22 |
| 46 | 1.3.2.3 | Validar las distintas soluciones |  | 1.3d | 2012-03-20 | 2012-03-21 | 45 | 0d |  | as late as possible | Becario Junior 1 [15%]; Consultor senior Ingeniero Informatico 1 [50%]; Becario Junior 2 [15%]; Consultor senior Ingeniero Informatico 2 [50%]; Consultor senior Ingeniero Informatico 3 (Externo) | 20h | 882.18 |
| 47 | 1.3.2.4 | Preparar un informe con las distintas soluciones |  | 1.25d | 2012-03-21 | 2012-03-23 | 46 | 0d |  |  | Becario Junior 1 [15%]; Consultor senior Ingeniero Informatico 1 [50%]; Becario Junior 2 [15%]; Consultor senior Ingeniero Informatico 2 [50%] | 6h | 152.07 |
| 48 | 1.3.3 | **Entrevistas con el cliente** |  | 0.75d | 2012-03-23 | 2012-03-23 | 43 | 0d |  |  |  | 12h | 496.56 |
| 49 | 1.3.3.1 | Validar con el cliente la solucion de obtencion de datos |  | 0.75d | 2012-03-23 | 2012-03-23 | 47 | 0d |  |  | Consultor senior Ingeniero Informatico 1; Consultor senior Ingeniero Informatico 2 | 12h | 496.56 |
| 50 | 1.3.4 | Definicion del documento de arquitectura de datos |  | 0.5d | 2012-03-23 | 2012-03-26 | 47, 49 | 0d |  |  | Consultor senior Ingeniero Informatico 1 [50%]; Consultor senior Ingeniero Informatico 2 [50%]; Consultor senior Ingeniero Informatico 3 (Externo) | 8h | 390.52 |
| 51 | 1.3.5 | Finalizacion de la definicion | milestone | 0d | 2012-03-26 | 2012-03-26 | 43, 48, 50 | 0d |  |  |  |  |  |
| 52 | 1.3.6 | Empezar la extracción de datos de los CI's |  | 0.44d | 2012-01-23 | 2012-01-24 |  | 54.16d |  |  | Consultor senior Ingeniero Informatico 3 (Externo) [35%]; Becario Junior 1 [30%]; Becario Junior 2 [30%] | 3.33h | 88.68 |

| ID | WBS | Task | Type | Duration | Start | Finish | Predecessors | Total slack | Free slack | Constraint | Resources | Work | Cost |
| --- | --- | --- | --- | --- | --- | --- | --- | --- | --- | --- | --- | --- | --- |
| 53 | 1.4 | **Implementar el sistema de gestión de la configuración** |  | 15.9d | 2012-01-23 | 2012-02-14 | 19 | 0d |  |  |  | 160h | 6,829.63 |
| 54 | 1.4.1 | Inicio de la implementacion | milestone | 0d | 2012-01-23 | 2012-01-23 | 19 | 1.27d |  |  |  |  |  |
| 55 | 1.4.2 | Definir el mecanismo de federacion/integracion de la CMBD |  | 4.69d | 2012-01-25 | 2012-01-31 | 54 | 0d |  | must start on 2012-01-25 | Becario Junior 1 [15%]; Consultor senior Ingeniero Informatico 1 [50%]; Becario Junior 2 [15%]; Consultor senior Ingeniero Informatico 2 [50%]; Consultor senior Ingeniero Informatico 3 (Externo) | 60h | 2,679.64 |
| 56 | 1.4.3 | Definir reglas de conciliacion |  | 6.82d | 2012-01-31 | 2012-02-09 | 55 | 0d |  |  | Becario Junior 1 [15%]; Consultor senior Ingeniero Informatico 1 [50%]; Becario Junior 2 [15%]; Consultor senior Ingeniero Informatico 2 [50%]; Consultor senior Ingeniero Informatico 3 (Externo) | 60h | 2,363.56 |
| 57 | 1.4.4 | Configurar y parametrizar la solucion |  | 3.12d | 2012-02-09 | 2012-02-14 | 56 | 0d |  |  | Becario Junior 1 [15%]; Consultor senior Ingeniero Informatico 1 [50%]; Becario Junior 2 [15%]; Consultor senior Ingeniero Informatico 2 [50%]; Consultor senior Ingeniero Informatico 3 (Externo) | 40h | 1,786.42 |
| 58 | 1.4.5 | Finalizacion de la implementacion | milestone | 0d | 2012-02-14 | 2012-02-14 | 55, 56, 57 | 0d |  |  |  |  |  |
| 59 | 1.5 | **Probar el sistema de gestión de la configuración** |  | 65.33d | 2012-01-09 | 2012-04-09 |  | 0d |  |  |  | 21.2h | 781.69 |
| 60 | 1.5.1 | Inicio de las pruebas | milestone | 0d | 2012-01-09 | 2012-01-09 |  | 65.33d |  |  |  |  |  |
| 61 | 1.5.2 | **Definir plan de pruebas** |  | 45.12d | 2012-01-23 | 2012-03-26 |  | 0d |  |  |  | 8.2h | 372.03 |
| 62 | 1.5.2.1 | Plan de pruebas para la identificacion de CI's |  | 0.25d | 2012-01-23 | 2012-01-23 | 19 | 35.16d | 6.43d |  | Consultor senior Ingeniero Informatico 3 (Externo) [10%] | 0.2h | 11.25 |
| 63 | 1.5.2.2 | Plan de pruebas para la implementacion de la CMBD |  | 0.5d | 2012-03-26 | 2012-03-26 | 51 | 0d |  |  | Consultor senior Ingeniero Informatico 1 [50%]; Consultor senior Ingeniero Informatico 2 [50%] | 4h | 165.52 |
| 64 | 1.5.2.3 | Plan de pruebas para la aplicación en tiempo real |  | 0.5d | 2012-02-14 | 2012-02-15 | 53 | 28.71d |  |  | Consultor senior Ingeniero Informatico 1 [25%]; Consultor senior Ingeniero Informatico 2 [25%]; Consultor senior Ingeniero Informatico 3 (Externo) [50%] | 4h | 195.26 |
| 65 | 1.5.3 | Presentar plan de pruebas |  | 0.21d | 2012-03-26 | 2012-03-27 | 62, 63, 64 | 0d |  |  | Becario Junior 2 [30%]; Becario Junior 1 [30%] | 1h | 9.31 |
| 66 | 1.5.4 | Recoger feedback |  | 1d | 2012-03-27 | 2012-03-28 | 65 | 0d |  |  | Consultor senior Ingeniero Informatico 1 [25%]; Consultor senior Ingeniero Informatico 2 [25%] | 4h | 165.52 |
| 67 | 1.5.5 | Moficar plan de pruebas original con el nuevo feedback |  | 0.25d | 2012-03-28 | 2012-03-28 | 66 | 0d |  |  | Consultor senior Ingeniero Informatico 1 [25%]; Consultor senior Ingeniero Informatico 2 [25%] | 1h | 41.38 |
| 68 | 1.5.6 | Interpretar resultados de las pruebas |  | 0.62d | 2012-04-05 | 2012-04-05 | 82, 75, 45 | 0d |  |  | Consultor senior Ingeniero Informatico 1 [60%]; Consultor senior Ingeniero Informatico 2 [60%]; Becario Junior 2 [30%]; Becario Junior 1 [30%] | 6h | 152.07 |
| 69 | 1.5.7 | Preparar informe con el resultado de las pruebas |  | 1.45d | 2012-04-05 | 2012-04-09 | 68 | 0d |  |  | Consultor senior Ingeniero Informatico 1 [7%]; Consultor senior Ingeniero Informatico 2 [7%] | 1h | 41.38 |
| 70 | 1.5.8 | Finalizacion de las pruebas | milestone | 0d | 2012-04-09 | 2012-04-09 | 61, 65, 66, 67, 69 | 0d |  |  |  |  |  |
| 71 | 1.6 | **Importar datos de las herramientas de descubrimiento** |  | 33.32d | 2012-02-14 | 2012-03-30 | 58 | 0d |  |  |  | 313h | 2,915.22 |
| 72 | 1.6.1 | Inicio de la importacion | milestone | 0d | 2012-02-14 | 2012-02-14 | 58 | 0d |  |  |  |  |  |
| 73 | 1.6.2 | Definir plan de importacion |  | 0.67d | 2012-02-14 | 2012-02-15 | 72 | 0d |  |  | Consultor senior Ingeniero Informatico 1 [50%]; Consultor senior Ingeniero Informatico 2 [50%]; Consultor senior Ingeniero Informatico 3 (Externo) [50%] | 8h | 370.89 |
| 74 | 1.6.3 | Localizar y comprobar la evolucion de la importacion |  | 30d | 2012-02-15 | 2012-03-28 | 73 | 0d |  |  | Proveedor A | 240h |  |
| 75 | 1.6.4 | Pruebas de la aplicación en tiempo real |  | 1.1d | 2012-03-28 | 2012-03-29 | 67, 74 | 0d |  |  | Consultor senior Ingeniero Informatico 2; Consultor senior Ingeniero Informatico 1; Consultor senior Ingeniero Informatico 3 (Externo); Becario Junior 1 [30%]; Becario Junior 2 [30%] | 24h | 954.59 |
| 76 | 1.6.5 | Verificar la correcta recepcion de datos de la CMBD |  | 1.34d | 2012-03-29 | 2012-03-30 | 75 | 0d |  |  | Consultor senior Ingeniero Informatico 2; Consultor senior Ingeniero Informatico 1; Consultor especializado en ITIL; Becario Junior 1 [30%]; Becario Junior 2 [30%]; Consultor senior Ingeniero Informatico 3 (Externo) | 40h | 1,580.44 |
| 77 | 1.6.6 | Entrega del documento de la importacion de datos |  | 0.21d | 2012-03-30 | 2012-03-30 | 76 | 0d |  |  | Becario Junior 1 [30%]; Becario Junior 2 [30%] | 1h | 9.31 |
| 78 | 1.6.7 | Finalizacion de la importacion | milestone | 0d | 2012-03-30 | 2012-03-30 | 73, 74, 75, 77 | 0d |  |  |  |  |  |

| ID | WBS | Task | Type | Duration | Start | Finish | Predecessors | Total slack | Free slack | Resources | Work | Cost |
| --- | --- | --- | --- | --- | --- | --- | --- | --- | --- | --- | --- | --- |
| 79 | 1.7 | **Realizar el Go live y apoyo pos-implementacion** |  | 4.66d | 2012-03-30 | 2012-04-06 | 78 | 0d |  |  | 132h | 5,278.76 |
| 80 | 1.7.1 | Inicio del apoyo pos-implementacion | milestone | 0d | 2012-03-30 | 2012-03-30 | 78 | 0d |  |  |  |  |
| 81 | 1.7.2 | Observar la aplicación en funcionamiento |  | 0.69d | 2012-03-30 | 2012-04-02 | 80 | 0d |  | Consultor senior Ingeniero Informatico 1; Consultor senior Ingeniero Informatico 2; Consultor senior Ingeniero Informatico 3 (Externo); Becario Junior 1 [30%]; Becario Junior 2 [30%] | 20h | 803.31 |
| 82 | 1.7.3 | Pruebas finales |  | 2.61d | 2012-04-02 | 2012-04-05 | 81 | 0d |  | Consultor senior Ingeniero Informatico 1; Consultor senior Ingeniero Informatico 2; Consultor especializado en ITIL; Becario Junior 1 [30%]; Becario Junior 2 [30%]; Consultor senior Ingeniero Informatico 3 (Externo) | 96h | 3,827.19 |
| 83 | 1.7.4 | Reunion con los usuarios |  | 1d | 2012-04-05 | 2012-04-06 | 82 | 0.71d | 0d | Consultor especializado en ITIL [33.3%]; Consultor senior Ingeniero Informatico 1 [33.3%]; Consultor senior Ingeniero Informatico 2 [33.3%] | 8h | 324.13 |
| 84 | 1.7.5 | Realizar ajustes de control |  | 0.36d | 2012-04-06 | 2012-04-06 | 83, 82 | 0.71d | 0d | Consultor senior Ingeniero Informatico 1 [93%]; Consultor senior Ingeniero Informatico 2 [93%]; Consultor especializado en ITIL | 8h | 324.13 |
| 85 | 1.7.6 | Finalizacion del apoyo pos-implementacion | milestone | 0d | 2012-04-06 | 2012-04-06 | 84, 81, 82, 83 | 0.71d |  |  |  |  |
